# Chasse immobilière — Belkacem

Schedule from GanttProject, 2026-07-27 to 2026-11-16.
Planning de référence actualisé au 05/09/2026. Les tâches réalisées avant cette date sont positionnées rétrospectivement à partir des livrables et validations effectivement produits. Les dépendances souples sur la partie historique matérialisent l'ordre logique sans déplacer les dates constatées. À partir du 07/09/2026, les tâches non réalisées sont planifiées dans le futur avec des dépendances fortes. Rendu final prévu le 31/12/2026.

## Calendars

- Project calendar: Mon-Sun working.

## Schedule

| ID | WBS | Task | Type | Duration | Start | Finish | Predecessors | Complete |
| --- | --- | --- | --- | --- | --- | --- | --- | --- |
| 1 | 1 | **Phase 1 — Audit de l’existant** |  | 2d | 2026-07-27 | 2026-07-28 |  | 100% |
| 2 | 1.1 | Analyser les consignes et l’existant |  | 1d | 2026-07-27 | 2026-07-27 |  | 100% |
| 3 | 1.2 | Cartographier le système d’information existant |  | 1d | 2026-07-27 | 2026-07-27 |  | 100% |
| 4 | 1.3 | Analyser la base de données et identifier les anomalies |  | 1d | 2026-07-27 | 2026-07-27 |  | 100% |
| 5 | 1.4 | Rédiger l’analyse et le registre des anomalies |  | 1d | 2026-07-28 | 2026-07-28 | 2, 4 | 100% |
| 6 | 1.5 | Réaliser l’analyse SWOT |  | 1d | 2026-07-28 | 2026-07-28 |  | 100% |
| 7 | 1.6 | Validation de la phase 1 | milestone | 0d | 2026-07-29 | 2026-07-29 | 5, 6 | 100% |
| 8 | 2 | **Phase 2 — Modèle cible et reprise des données** |  | 50d | 2026-07-29 | 2026-09-16 |  | 100% |
| 9 | 2.1 | Cadrer les besoins métier et les règles de gestion |  | 5d | 2026-07-29 | 2026-08-02 |  | 100% |
| 10 | 2.2 | Concevoir et valider le MCD cible |  | 6d | 2026-08-05 | 2026-08-10 | 9 | 100% |
| 11 | 2.3 | Concevoir et valider le MLD cible |  | 4d | 2026-08-13 | 2026-08-16 | 10 | 100% |
| 12 | 2.4 | Construire et exécuter migration-final.sql |  | 3d | 2026-08-19 | 2026-08-21 | 11 | 100% |
| 13 | 2.5 | Construire et exécuter reprise-donnees-final.sql |  | 5d | 2026-08-24 | 2026-08-28 | 12 | 100% |
| 14 | 2.6 | Produire la preuve de validation de la reprise |  | 2d | 2026-08-31 | 2026-09-01 | 13 | 100% |
| 15 | 2.7 | Finaliser et valider le cahier des charges technique |  | 3d | 2026-09-02 | 2026-09-04 | 14 | 100% |
| 16 | 2.8 | Réaliser l’étude d’opportunité |  | 1d | 2026-09-05 | 2026-09-05 | 15 | 100% |
| 17 | 2.9 | Prioriser le backlog fonctionnel |  | 1d | 2026-09-05 | 2026-09-05 | 16 | 100% |
| 18 | 2.10 | Formaliser BPMN et RACI |  | 2d | 2026-09-05 | 2026-09-06 | 17 | 100% |
| 19 | 2.11 | Consolider RGPD, éco-conception et traçabilité |  | 1d | 2026-09-06 | 2026-09-06 | 18 | 100% |
| 20 | 2.12 | Validation de la phase 2 | milestone | 0d | 2026-09-06 | 2026-09-06 | 19 | 100% |
| 21 | 3 | **Phase 3 — Architecture de croissance et décisionnel** |  | 23d | 2026-09-17 | 2026-10-09 |  | 100% |
| 22 | 3.1 | Analyser les volumes, la croissance et les contraintes 3V |  | 4d | 2026-09-17 | 2026-09-20 | 20 | 100% |
| 23 | 3.2 | Concevoir la séparation OLTP / OLAP |  | 5d | 2026-09-21 | 2026-09-25 | 22 | 100% |
| 24 | 3.3 | Étudier l’architecture PostgreSQL distribuée / Citus |  | 5d | 2026-09-21 | 2026-09-25 | 22 | 100% |
| 25 | 3.4 | Prototyper Citus avec k3d |  | 5d | 2026-09-26 | 2026-09-30 | 24 | 100% |
| 26 | 3.5 | Définir indexation, partitionnement et stratégie de performance |  | 4d | 2026-10-01 | 2026-10-04 | 23, 25 | 100% |
| 27 | 3.6 | Formaliser PCA, PRA et stratégie de migration |  | 5d | 2026-10-05 | 2026-10-09 | 26 | 100% |
| 28 | 3.7 | Concevoir le modèle décisionnel et les indicateurs |  | 5d | 2026-09-26 | 2026-09-30 | 23 | 100% |
| 29 | 3.8 | Validation de la phase 3 | milestone | 0d | 2026-10-10 | 2026-10-10 | 27, 28 | 100% |

Notes:
- 15: Dernier livrable technique de Phase 2 considéré réalisé au 05/09/2026.
- 16: Étude d’opportunité produite, contrôlée et validée le 05/09/2026. Preuve : 02-modele-cible/etude-opportunite.md, commit 19f674e.
- 17: Backlog fonctionnel priorisé produit, contrôlé et validé le 05/09/2026. Preuve : 02-modele-cible/backlog-priorise.md, commit 7380d91.
- 18: BPMN métier produit, contrôlé dans Camunda, exporté en PNG et validé le 05/09/2026. Preuves : 02-modele-cible/processus-metier.bpmn et processus-metier.png, commit 5752e97. RACI adapté au projet solo produit, contrôlé et validé le 05/09/2026. Preuve : 02-modele-cible/RACI.md, commit 54cd765.
- 19: RGPD, éco-conception et traçabilité des compétences consolidés et contrôlés le 06/09/2026. Preuves : 02-modele-cible/registre-rgpd.md, 02-modele-cible/note-eco-conception.md et 02-modele-cible/TRACABILITE-COMPETENCES.md. L'auto-évaluation a également été synchronisée avec les preuves réellement disponibles.
- 20: Phase 2 terminée et validée le 06/09/2026 après contrôle des livrables du modèle cible, de la migration, de la reprise des données et des preuves associées.
- 21: Phase 3 réalisée en avance et considérée terminée au 09/09/2026. Les dates start/duration conservent le planning prévisionnel initial. Les preuves réelles sont réparties dans 03-architecture/, auto-evaluation-MAJ-2026-09-05.md et decisions/journal-decisions-MAJ-2026-09-05.md.
- 22: Analyse 3V produite et versionnée le 07/09/2026. Preuve : 03-architecture/note-dimensionnement-3v.md, commit 608cadc.
- 23: Séparation OLTP / OLAP conçue et documentée à partir du 07/09/2026, puis consolidée avec preuve d'alimentation réelle le 09/09/2026. Preuves : 03-architecture/oltp-olap-modele-decisionnel.md, 03-architecture/olap-schema.svg, 03-architecture/sql/olap-schema.sql et 03-architecture/sql/olap-etl.sql.
- 24: Architecture distribuée PostgreSQL / Citus étudiée et comparée en Phase 3. Citus n'est pas retenu comme architecture obligatoire actuelle ; il reste une option d'évolution future. Preuves : 03-architecture/dossier-architecture-de-croissance.md et 03-architecture/matrice-décision-architecture.md.
- 25: POC Citus / sharding réalisé et versionné le 08/09/2026. Preuve : 03-architecture/poc-citus/benchmark-citus-sharding.md, commit 2cb8a18.
- 26: Stratégie de performance validée par benchmarks. Indexation et partitionnement testés le 07/09/2026. Preuves : 03-architecture/benchmark-indexation.md, commit e65b459, et 03-architecture/benchmark-partitionnement.md, commit 7dd2cc1.
- 27: PCA/PRA, haute disponibilité, restauration distante, matrice des risques et plan de migration consolidés au 09/09/2026. Preuves : 03-architecture/benchmark-replication-ha.md, 03-architecture/pca-pra-complet-maj.md, 03-architecture/matrice-risques.md et 03-architecture/plan-migration.md.
- 28: Modèle décisionnel et indicateurs conçus à partir du 07/09/2026. Schéma OLAP, ETL, contrôles qualité et alimentation réelle documentés. Preuves : 03-architecture/oltp-olap-modele-decisionnel.md, 03-architecture/olap-schema.svg et 03-architecture/sql/olap-etl.sql.
- 29: Validation de la Phase 3 au 09/09/2026 après contrôle des livrables, preuves techniques, références de fichiers, auto-évaluation et journal des décisions. Phase terminée en avance par rapport au planning prévisionnel initial.

| ID | WBS | Task | Type | Duration | Start | Finish | Predecessors | Complete |
| --- | --- | --- | --- | --- | --- | --- | --- | --- |
| 30 | 4 | **Phase 4 — Backend, API et IA** |  | 27d | 2026-10-10 | 2026-11-05 |  |  |
| 31 | 4.1 | Concevoir l’architecture applicative du backend |  | 4d | 2026-10-10 | 2026-10-13 | 29 |  |
| 32 | 4.2 | Développer l’API et les accès aux données |  | 8d | 2026-10-14 | 2026-10-21 | 31 |  |
| 33 | 4.3 | Implémenter les règles métier et contrôles d’accès |  | 5d | 2026-10-22 | 2026-10-26 | 32 |  |
| 34 | 4.4 | Préparer le pipeline de matching et les traitements IA |  | 6d | 2026-10-22 | 2026-10-27 | 32 |  |
| 35 | 4.5 | Réaliser les tests fonctionnels, techniques et sécurité |  | 5d | 2026-10-28 | 2026-11-01 | 33, 34 |  |
| 36 | 4.6 | Documenter API, accessibilité et exploitation |  | 4d | 2026-11-02 | 2026-11-05 | 35 |  |
| 37 | 4.7 | Validation de la phase 4 | milestone | 0d | 2026-11-06 | 2026-11-06 | 36 |  |
| 38 | 5 | **Finalisation du dossier et préparation de la soutenance** |  | 5d | 2026-11-02 | 2026-11-06 |  |  |
| 39 | 5.1 | Consolider les preuves et la traçabilité des compétences |  | 2d | 2026-11-02 | 2026-11-03 | 35 |  |
| 40 | 5.2 | Finaliser l’auto-évaluation |  | 1d | 2026-11-04 | 2026-11-04 | 39 |  |
| 41 | 5.3 | Préparer le support de soutenance |  | 2d | 2026-11-04 | 2026-11-05 | 39 |  |
| 42 | 5.4 | Répéter la soutenance et contrôler le dépôt final |  | 1d | 2026-11-06 | 2026-11-06 | 40, 41 |  |
| 43 | 5.5 | Rendu final | milestone | 0d | 2026-11-07 | 2026-11-07 | 37, 42 |  |
| 44 | 6 | **Pilotage transversal** |  | 113d | 2026-07-27 | 2026-11-16 |  | 47% |
| 45 | 6.1 | Maintenir le journal de décisions |  | 113d | 2026-07-27 | 2026-11-16 |  | 60% |
| 46 | 6.2 | Mettre à jour le Gantt aux jalons |  | 113d | 2026-07-27 | 2026-11-16 |  | 55% |
| 47 | 6.3 | Maintenir l’auto-évaluation RNCP |  | 113d | 2026-07-27 | 2026-11-16 |  | 40% |
| 48 | 6.4 | Maintenir la traçabilité des compétences |  | 113d | 2026-07-27 | 2026-11-16 |  | 35% |
